# Proyecto CMH

Schedule from MS Project, 2016-08-29 to 2016-11-20, costs in $, A marks actual dates.

## Calendars

- Estándar: Mon-Fri 09:00-13:00, 15:00-19:00; Sat-Sun off. Exceptions (off unless hours are given): 2016-09-19 (Día de las glorias del ejército), 2016-10-10 (Encuentro de dos mundo), 2016-10-31 (Día nacional de las iglesias evangélicas y protestantes), 2016-11-01 (Día de todos los santos).

## Resources

| Resource | Rate |
| --- | --- |
| Pablo de la Sotta | 13000 |
| Tomás Muñiz | 13000 |
| Gonzalo López | 13000 |
| Fabián Jaque | 13000 |
| Elías Baeza | 13000 |

## Schedule

| ID | WBS | Task | Type | Duration | Start | Finish | Predecessors | Complete | Constraint | Resources | Work | Actual work | Cost | Actual cost |
| --- | --- | --- | --- | --- | --- | --- | --- | --- | --- | --- | --- | --- | --- | --- |
| 1 | 1 | **Iteración 1: Planificación del proyecto** |  | 19d | 2016-08-29 A | 2016-09-25 A |  | 100% |  |  | 336h | 336h | 4,368,000 | 4,368,000 |
| 2 | 1.1 | **Análisis y planificación del proyecto** |  | 12d | 2016-08-29 A | 2016-09-13 A |  | 100% |  |  | 248h | 248h | 3,224,000 | 3,224,000 |
| 3 | 1.1.1 | **Definición del proyecto** |  | 10d | 2016-08-29 A | 2016-09-09 A |  | 100% |  |  | 224h | 224h | 2,912,000 | 2,912,000 |
| 4 | 1.1.1.1 | Elaborar alcance |  | 5d | 2016-08-29 A | 2016-09-02 A |  | 100% |  | Fabián Jaque; Gonzalo López | 80h | 80h | 1,040,000 | 1,040,000 |
| 5 | 1.1.1.2 | Elaborar ERS |  | 5d | 2016-08-29 A | 2016-09-02 A |  | 100% |  | Tomás Muñiz | 40h | 40h | 520,000 | 520,000 |
| 6 | 1.1.1.3 | Elaborar modelos de proceso |  | 10d | 2016-08-29 A | 2016-09-09 A |  | 100% |  | Pablo de la Sotta | 80h | 80h | 1,040,000 | 1,040,000 |
| 7 | 1.1.1.4 | Establecer objetivos |  | 3d | 2016-08-29 A | 2016-08-31 A |  | 100% |  | Elías Baeza | 24h | 24h | 312,000 | 312,000 |
| 8 | 1.1.1.5 | Entrega documento alcance | milestone | 0d | 2016-09-02 A | 2016-09-02 A | 4 | 100% |  |  |  |  |  |  |
| 9 | 1.1.1.6 | Entrega ERS | milestone | 0d | 2016-09-02 A | 2016-09-02 A | 5 | 100% |  |  |  |  |  |  |
| 10 | 1.1.1.7 | Entregar modelos de proceso | milestone | 0d | 2016-09-09 A | 2016-09-09 A | 6 | 100% |  |  |  |  |  |  |
| 11 | 1.1.1.8 | Entrega matriz de objetivos | milestone | 0d | 2016-08-31 A | 2016-08-31 A | 7 | 100% |  |  |  |  |  |  |
| 12 | 1.1.2 | **Organización del proyecto** |  | 2d | 2016-09-12 A | 2016-09-13 A | 3 | 100% |  |  | 24h | 24h | 312,000 | 312,000 |
| 13 | 1.1.2.1 | Elaborar estructura organizacional |  | 1d | 2016-09-12 A | 2016-09-12 A |  | 100% |  | Gonzalo López | 8h | 8h | 104,000 | 104,000 |
| 14 | 1.1.2.2 | Establecer responsables |  | 1d | 2016-09-12 A | 2016-09-12 A |  | 100% |  | Tomás Muñiz | 8h | 8h | 104,000 | 104,000 |
| 15 | 1.1.2.3 | Establecer interfaces e interacciones |  | 1d | 2016-09-13 A | 2016-09-13 A | 14 | 100% |  | Tomás Muñiz | 8h | 8h | 104,000 | 104,000 |
| 16 | 1.1.2.4 | Entregar documento organizacional | milestone | 0d | 2016-09-13 A | 2016-09-13 A | 13, 14, 15 | 100% |  |  |  |  |  |  |
| 17 | 1.2 | **Planificación de gestión** |  | 3d | 2016-09-14 A | 2016-09-16 A | 12 | 100% |  |  | 48h | 48h | 624,000 | 624,000 |
| 18 | 1.2.1 | Definir restricciones |  | 2d | 2016-09-14 A | 2016-09-15 A |  | 100% |  | Elías Baeza | 16h | 16h | 208,000 | 208,000 |
| 19 | 1.2.2 | Elaborar plan de gestión de riesgos |  | 2d | 2016-09-14 A | 2016-09-15 A |  | 100% |  | Fabián Jaque | 16h | 16h | 208,000 | 208,000 |
| 20 | 1.2.3 | Definir condiciones asumidas |  | 1d | 2016-09-14 A | 2016-09-14 A |  | 100% |  | Pablo de la Sotta | 8h | 8h | 104,000 | 104,000 |
| 21 | 1.2.4 | Elaborar mecanismos de control y ajuste |  | 1d | 2016-09-16 A | 2016-09-16 A | 18 | 100% |  | Elías Baeza | 8h | 8h | 104,000 | 104,000 |
| 22 | 1.2.5 | Entregar plan de gestión | milestone | 0d | 2016-09-16 A | 2016-09-16 A | 20, 21, 19 | 100% |  |  |  |  |  |  |
| 23 | 1.3 | **Recursos humanos** |  | 4d | 2016-09-20 A | 2016-09-23 A | 17 | 100% |  |  | 40h | 40h | 520,000 | 520,000 |
| 24 | 1.3.1 | Planificar distribución de recursos humanos |  | 1d | 2016-09-20 A | 2016-09-20 A |  | 100% |  | Fabián Jaque | 8h | 8h | 104,000 | 104,000 |
| 25 | 1.3.2 | Establecer dependencias |  | 1d | 2016-09-20 A | 2016-09-20 A |  | 100% |  | Tomás Muñiz | 8h | 8h | 104,000 | 104,000 |
| 26 | 1.3.3 | Elaborar cronograma |  | 3d | 2016-09-21 A | 2016-09-23 A | 24 | 100% |  | Fabián Jaque | 24h | 24h | 312,000 | 312,000 |
| 27 | 1.3.4 | Entregar plan de recursos humanos | milestone | 0d | 2016-09-23 A | 2016-09-23 A | 25, 26 | 100% |  |  |  |  |  |  |
| 28 | 1.4 | Entregar plan de proyecto | milestone | 0d | 2016-09-25 A | 2016-09-25 A |  | 100% | finish no earlier than 2016-09-25 |  |  |  |  |  |

| ID | WBS | Task | Type | Duration | Start | Finish | Predecessors | Complete | Remaining | Total slack | Free slack | Resources | Work | Actual work | Cost | Actual cost |
| --- | --- | --- | --- | --- | --- | --- | --- | --- | --- | --- | --- | --- | --- | --- | --- | --- |
| 29 | 2 | **Iteración 2: Diseño del sistema** |  | 24d | 2016-09-26 A | 2016-10-30 | 1 | 18% | 19.73d | 0d |  |  | 152h | 112h | 1,976,000 | 1,456,000 |
| 30 | 2.1 | **Arquitectura** |  | 7d | 2016-09-26 A | 2016-10-04 |  | 80% | 1.4d | 0d |  |  | 136h | 112h | 1,768,000 | 1,456,000 |
| 31 | 2.1.1 | Elaborar casos de uso |  | 3d | 2016-09-26 A | 2016-09-28 A |  | 100% |  |  |  | Fabián Jaque; Pablo de la Sotta | 48h | 48h | 624,000 | 624,000 |
| 32 | 2.1.2 | Diagramar casos de uso |  | 1d | 2016-09-29 A | 2016-09-29 A | 31 | 100% |  |  |  | Elías Baeza | 8h | 8h | 104,000 | 104,000 |
| 33 | 2.1.3 | Elaborar especificación de casos de uso |  | 4d | 2016-09-29 A | 2016-10-04 | 31 | 75% | 1d | 0d |  | Gonzalo López; Tomás Muñiz | 64h | 48h | 832,000 | 624,000 |
| 34 | 2.1.4 | Elaborar diagrama de despliegue |  | 2d | 2016-09-29 A | 2016-09-30 | 31 | 50% | 1d | 2d |  | Pablo de la Sotta | 16h | 8h | 208,000 | 104,000 |
| 35 | 2.1.5 | Entrega documento arquitectura | milestone | 0d | 2016-10-04 | 2016-10-04 | 33, 34 |  |  | 0d |  |  |  |  |  |  |
| 36 | 2.2 | **Modelo de datos CMH** |  | 3d | 2016-10-05 | 2016-10-07 | 30 |  |  | 0d |  |  | 16h |  | 208,000 |  |
| 37 | 2.2.1 | Elaborar modelo de datos |  | 2d | 2016-10-05 | 2016-10-06 |  |  |  | 0d |  | Pablo de la Sotta | 16h |  | 208,000 |  |
| 38 | 2.2.2 | Elaborar diccionario de datos |  | 1d | 2016-10-07 | 2016-10-07 | 37 |  |  | 0d |  |  |  |  |  |  |
| 39 | 2.2.3 | Elaborar especificación procedimiento almacenado |  | 1d | 2016-10-07 | 2016-10-07 | 37 |  |  | 0d |  |  |  |  |  |  |
| 40 | 2.2.4 | Entregar modelo de datos | milestone | 0d | 2016-10-07 | 2016-10-07 | 38 |  |  | 0d |  |  |  |  |  |  |
| 41 | 2.2.5 | Entregar especificación de procedimiento almacenado | milestone | 0d | 2016-10-07 | 2016-10-07 | 39 |  |  | 0d |  |  |  |  |  |  |
| 42 | 2.3 | **Módulo WS** |  | 4d | 2016-10-07 | 2016-10-14 | 36 |  |  | 1d | 0d |  |  |  |  |  |
| 43 | 2.3.1 | Diagramar clases |  | 1d | 2016-10-11 | 2016-10-11 |  |  |  | 1d | 0d |  |  |  |  |  |
| 44 | 2.3.2 | Diagramar secuencias |  | 2d | 2016-10-12 | 2016-10-13 | 43 |  |  | 1d | 0d |  |  |  |  |  |
| 45 | 2.3.3 | Elaborar casos prueba |  | 1d | 2016-10-14 | 2016-10-14 | 44 |  |  | 1d |  |  |  |  |  |  |
| 46 | 2.3.4 | Entregar documentación WS | milestone | 0d | 2016-10-07 | 2016-10-07 |  |  |  | 5d |  |  |  |  |  |  |
| 47 | 2.4 | **Aplicación Web** |  | 4d | 2016-10-11 | 2016-10-14 | 36 |  |  | 0d |  |  |  |  |  |  |
| 48 | 2.4.1 | Diagramar clases |  | 1d | 2016-10-11 | 2016-10-11 |  |  |  | 0d |  |  |  |  |  |  |
| 49 | 2.4.2 | Diagramar secuencias |  | 2d | 2016-10-12 | 2016-10-13 | 48 |  |  | 0d |  |  |  |  |  |  |
| 50 | 2.4.3 | Elaborar casos prueba |  | 1d | 2016-10-14 | 2016-10-14 | 49 |  |  | 0d |  |  |  |  |  |  |
| 51 | 2.4.4 | Entregar documentación aplicación web | milestone | 0d | 2016-10-14 | 2016-10-14 | 50 |  |  | 0d |  |  |  |  |  |  |
| 52 | 2.5 | **Website** |  | 5d | 2016-10-17 | 2016-10-21 | 42 |  |  | 1d | 0d |  |  |  |  |  |
| 53 | 2.5.1 | Diagramar clases |  | 1d | 2016-10-17 | 2016-10-17 |  |  |  | 1d | 0d |  |  |  |  |  |
| 54 | 2.5.2 | Diagramar secuencias |  | 3d | 2016-10-18 | 2016-10-20 | 53 |  |  | 1d | 0d |  |  |  |  |  |
| 55 | 2.5.3 | Elaborar casos prueba |  | 1d | 2016-10-21 | 2016-10-21 | 54 |  |  | 1d | 0d |  |  |  |  |  |
| 56 | 2.5.4 | Elaborar bocetos Website |  | 1d | 2016-10-21 | 2016-10-21 | 54 |  |  | 1d | 0d |  |  |  |  |  |
| 57 | 2.5.5 | Entregar documentación Website | milestone | 0d | 2016-10-21 | 2016-10-21 | 55, 56 |  |  | 1d |  |  |  |  |  |  |

| ID | WBS | Task | Type | Duration | Start | Finish | Predecessors | Total slack | Free slack | Constraint |
| --- | --- | --- | --- | --- | --- | --- | --- | --- | --- | --- |
| 58 | 2.6 | **Terminal** |  | 10d | 2016-10-17 | 2016-10-28 | 47 | 0d |  |  |
| 59 | 2.6.1 | Diagramar clases |  | 2d | 2016-10-17 | 2016-10-18 |  | 0d |  |  |
| 60 | 2.6.2 | Diagramar secuencias |  | 5d | 2016-10-19 | 2016-10-25 | 59 | 0d |  |  |
| 61 | 2.6.3 | Elaborar casos prueba |  | 2d | 2016-10-26 | 2016-10-27 | 60 | 1d |  |  |
| 62 | 2.6.4 | Elaborar bocetos Website |  | 3d | 2016-10-26 | 2016-10-28 | 60 | 0d |  |  |
| 63 | 2.6.5 | Entregar documentación Website | milestone | 0d | 2016-10-28 | 2016-10-28 | 61, 62 | 0d |  |  |
| 64 | 2.7 | **WS Aseguradora** |  | 4d | 2016-10-24 | 2016-10-27 | 52 | 1d |  |  |
| 65 | 2.7.1 | Diagramar clases |  | 1d | 2016-10-24 | 2016-10-24 |  | 1d | 0d |  |
| 66 | 2.7.2 | Diagramar secuencias |  | 2d | 2016-10-25 | 2016-10-26 | 65 | 1d | 0d |  |
| 67 | 2.7.3 | Elaborar casos de prueba |  | 1d | 2016-10-27 | 2016-10-27 | 66 | 1d | 0d |  |
| 68 | 2.7.4 | Elaborar modelo de datos |  | 1d | 2016-10-27 | 2016-10-27 | 66 | 1d | 0d |  |
| 69 | 2.7.5 | Entregar documentación WS Aseguradora | milestone | 0d | 2016-10-27 | 2016-10-27 | 67, 68 | 1d |  |  |
| 70 | 2.8 | Entregar diseño del sistema | milestone | 0d | 2016-10-30 | 2016-10-30 |  | 0d |  | start no earlier than 2016-10-30 |
| 71 | 3 | **Iteración 3: Construcción del sistema** |  | 13d | 2016-10-30 | 2016-11-20 | 29 | 0d |  |  |
| 72 | 3.1 | **Script BD CMH** |  | 1d | 2016-10-30 | 2016-11-02 |  | 1d | 0d |  |
| 73 | 3.1.1 | Construcción script BD CMH |  | 1d | 2016-11-02 | 2016-11-02 |  | 1d |  |  |
| 74 | 3.1.2 | Entrega script BD CMH | milestone | 0d | 2016-10-30 | 2016-10-30 |  | 2d |  |  |
| 75 | 3.2 | **Módulo WS** |  | 2d | 2016-11-02 | 2016-11-04 | 72 | 1d | 0d |  |
| 76 | 3.2.1 | Construcción WS |  | 2d | 2016-11-03 | 2016-11-04 |  | 1d |  |  |
| 77 | 3.2.2 | Entrega WS | milestone | 0d | 2016-11-02 | 2016-11-02 |  | 3d |  |  |
| 78 | 3.3 | **Aplicación Web** |  | 2d | 2016-11-04 | 2016-11-08 | 75 | 1d | 0d |  |
| 79 | 3.3.1 | Construcción web |  | 2d | 2016-11-07 | 2016-11-08 |  | 1d |  |  |
| 80 | 3.3.2 | Entrega módulo web | milestone | 0d | 2016-11-04 | 2016-11-04 |  | 3d |  |  |
| 81 | 3.4 | **Website** |  | 3d | 2016-11-08 | 2016-11-11 | 78 | 1d | 0d |  |
| 82 | 3.4.1 | Construcción módulo Website |  | 3d | 2016-11-09 | 2016-11-11 |  | 1d |  |  |
| 83 | 3.4.2 | Entrega módulo Website | milestone | 0d | 2016-11-08 | 2016-11-08 |  | 4d |  |  |

| ID | WBS | Task | Type | Duration | Start | Finish | Predecessors | Total slack | Constraint |
| --- | --- | --- | --- | --- | --- | --- | --- | --- | --- |
| 84 | 3.5 | **Terminal** |  | 8d | 2016-10-30 | 2016-11-11 |  | 0d |  |
| 85 | 3.5.1 | Construcción módulo terminal |  | 8d | 2016-11-02 | 2016-11-11 |  | 0d |  |
| 86 | 3.5.2 | Entrega módulo terminal | milestone | 0d | 2016-10-30 | 2016-10-30 |  | 8d |  |
| 87 | 3.6 | **WS Aseguradora** |  | 2d | 2016-11-11 | 2016-11-15 | 84 | 0d |  |
| 88 | 3.6.1 | Construcción script BD CMH |  | 1d | 2016-11-14 | 2016-11-14 |  | 1d |  |
| 89 | 3.6.2 | Construcción módulo aseguradora |  | 2d | 2016-11-14 | 2016-11-15 |  | 0d |  |
| 90 | 3.6.3 | Entrega script BD WS Aseguradora | milestone | 0d | 2016-11-11 | 2016-11-11 |  | 2d |  |
| 91 | 3.6.4 | Entrega módulo WS Aseguradora | milestone | 0d | 2016-11-11 | 2016-11-11 |  | 2d |  |
| 92 | 3.7 | **Pruebas de calidad** |  | 5d | 2016-11-14 | 2016-11-18 |  | 0d |  |
| 93 | 3.7.1 | Pruebas unitarias |  | 4d | 2016-11-14 | 2016-11-17 | 81 | 1d |  |
| 94 | 3.7.2 | Pruebas de integración |  | 2d | 2016-11-16 | 2016-11-17 | 84, 87 | 0d |  |
| 95 | 3.7.3 | Pruebas de aceptación |  | 1d | 2016-11-18 | 2016-11-18 | 94 | 0d |  |
| 96 | 3.8 | Entrega del sistema | milestone | 0d | 2016-11-20 | 2016-11-20 |  | 0d | start no earlier than 2016-11-20 |
